# AGI MOSS Workshop

Schedule from MS Project, 2006-08-21 to 2006-09-22, scheduled back from the finish.
INS

## Calendars

- Standard: Mon-Fri 08:00-12:00, 13:00-17:00; Sat-Sun off.

## Resources

| Resource | Group | Notes |
| --- | --- | --- |
| Project Manager | Consultive | Project management and deliverables |
| Client Relationship Manager | Consultive | Client relationship management |
| Business Subject Matter Expert | Client | Source for business requirements |
| Technical Lead | Development | Application design |
| Logistics Administrator | Client | Coordinates the schedule of all tasks associated with the release implementation. |
| Documentation and Training Developer | Client | Documentation and training |
| Technical Architect | Development | Technical architecture and application integration |
| Client Business Owner | Client | Primary client contact |
| System Administrator | Client | Technical operation, configuration, and security |
| Database Administrator | Client | Database creation and administration |
| Business Analyst | Consultive | Development of functional requirements |
| Business Architect | Consultive | Requirements gathering and analysis |
| Change Management Coordinator | Client | Coordinates all tasks associated with transitioning to a new organizational structure. |
| Quality Assurance | Development | Test planning and execution |
| Developer | Development | Application development |
| Content Publisher or Technical Librarian | Client | Procedures for adding and updating content |
| Graphic Designer | Client | Graphical design of the site |

## Schedule

| ID | WBS | Task | Duration | Start | Finish | Baseline start | Baseline finish | Baseline duration | Total slack | Free slack | Constraint | Resources | Work | Text1 | Text5 | Text6 | Text2 | Text3 |
| --- | --- | --- | --- | --- | --- | --- | --- | --- | --- | --- | --- | --- | --- | --- | --- | --- | --- | --- |
| 1 | 1 | **Planning** | 25d? | 2006-08-21 | 2006-09-22 |  |  |  | 0d |  | as late as possible |  | 344h |  |  |  |  |  |
| 2 | 1.1 | **Conduct Project Kickoff Meeting** | 25d? | 2006-08-21 | 2006-09-22 | 2000-10-17 | 2000-10-20 | 4d? | 0d |  | as late as possible | Project Manager | 208h | 2010 | 12,11,13 | 15 |  |  |
| 3 | 1.1.1 | Define workshop program parameters | 1d? | 2006-09-22 | 2006-09-22 |  |  |  | 24d | 0d | as late as possible |  |  |  |  |  |  |  |
| 4 | 1.1.2 | OPCAP requirements overview - Identify People, Tasks, Items, Business Rules | 1d? | 2006-08-21 | 2006-08-21 |  |  |  | 0d |  | start no later than 2006-08-21 |  |  |  |  |  |  |  |
| 5 | 1.1.3 | Identify target module | 1d? | 2006-09-22 | 2006-09-22 |  |  |  | 24d | 0d | as late as possible |  |  |  |  |  |  |  |
| 7 | 1.1.4 | Acquire the Equipment, Supplies, and Facilities That Will Be Required for the Project Team | 1d? | 2006-09-22 | 2006-09-22 | 2000-10-23 | 2000-10-26 | 4d? | 24d | 0d | start no earlier than 2006-08-09 | Project Manager | 8h | new | 14 | 82 | Add coresponding line to Project Manager to do list |  |
| 8 | 1.2 | **Analysis** | 25d? | 2006-08-21 | 2006-09-22 | 2000-10-09 | 2000-10-27 | 14.62d? | 0d |  | as late as possible |  | 136h | new |  |  |  |  |
| 9 | 1.2.1 | Create Matrix - OPCAP Modules to SharePoint Features | 1d? | 2006-09-22 | 2006-09-22 |  |  |  | 24d | 0d | as late as possible |  |  |  |  |  |  |  |
| 10 | 1.2.2 | Document the client's business objectives in the Requirements definition. | 1d? | 2006-08-21 | 2006-08-21 | 2000-10-16 | 2000-10-16 | 0d? | 24d |  |  | Project Manager | 8h | 3010 | 5,19 | 22,29,21 |  | PD WD |
| 11 | 1.2.3 | Assess need for potential 3rd-party or custom modules | 1d? | 2006-08-21 | 2006-08-21 | 2000-10-17 | 2000-10-17 | 1h? | 24d |  |  | Project Manager | 8h | 3070 | 20 | 24,25,26,27,30,31,32 |  | PD |
| 12 | 1.2.4 | Define user classes | 1d? | 2006-08-21 | 2006-08-21 | 2000-10-17 | 2000-10-17 | 1h? | 24d |  |  | Business Architect | 8h | 3030 | 20 | 23,33,35,44,45 |  | PD WD |
| 13 | 1.2.5 | Define Content Display Application (CDA) Requirements | 1d? | 2006-08-21 | 2006-08-21 | 2000-10-17 | 2000-10-17 | 1h? | 24d |  |  | Business Architect | 8h | 3050 | 22 | 24,25,26,27 |  | PI GD |
| 14 | 1.2.6 | CDA Requirements Complete | 1d? | 2006-08-21 | 2006-08-21 | 2000-10-19 | 2000-10-19 | 0d? | 24d |  |  | Project Manager | 8h | new | 24,25,26,27 | 36,37 |  |  |
| 15 | 1.2.7 | Define Content Production Requirements | 1d? | 2006-08-21 | 2006-08-21 | 2000-10-17 | 2000-10-17 | 1h? | 24d |  |  | Business Architect | 8h | 3090 | 20 | 31,30,32 | Switched with Define CMA requirements | PI CD GD |
| 16 | 1.2.8 | Define CMA requirements | 1d? | 2006-08-21 | 2006-08-21 | 2000-10-17 | 2000-10-19 | 16h? | 24d |  |  | Business Architect | 8h | 3060 | 21,29 | 32,31 | Switched with Define Content Production Requirements | PI GD |
| 17 | 1.2.9 | Define the Workflow Requirements | 1d? | 2006-08-21 | 2006-08-21 | 2000-10-19 | 2000-10-19 | 1h? | 24d |  |  | Business Architect | 8h | 3040 | 21,29,30,45 | 32 |  | PI CD GD |
| 18 | 1.2.10 | CMA Requirements Complete | 1d? | 2006-08-21 | 2006-08-21 | 2000-10-19 | 2000-10-19 | 0d? | 24d |  |  | Project Manager | 8h | new | 21,29,30,31 | 36,37 |  |  |
| 19 | 1.2.11 | Define Requirements for Third-Party Integrations | 1d? | 2006-08-21 | 2006-08-21 | 2000-10-09 | 2000-10-09 | 1d? | 24d |  |  | Technical Architect | 8h |  |  |  |  |  |
| 20 | 1.2.12 | Define Security Requirements | 1d? | 2006-08-21 | 2006-08-21 | 2000-10-17 | 2000-10-17 | 1h? | 24d |  |  | Business Analyst | 8h | 3150 | 22 | 36,37 |  | GI |
| 21 | 1.2.13 | Define Logical Data Model | 1d? | 2006-08-21 | 2006-08-21 | 2000-10-19 | 2000-10-23 | 16h? | 24d |  |  | Business Analyst | 8h | 3180 | 28,32,33,35 | 38 |  | PD WI GD |
| 22 | 1.2.14 | Define Key Performance Indicators | 1d? | 2006-08-21 | 2006-08-21 | 2000-10-19 | 2000-10-19 | 1h? | 24d |  |  | Technical Lead | 8h | 3170 | 28,32,33,35 | 38,39 |  | PD WD GD |
| 23 | 1.2.15 | Complete Requirements Document | 1d? | 2006-08-21 | 2006-08-21 | 2000-10-25 | 2000-10-25 | 1h? | 24d |  |  | Business Architect | 8h | 3220 | 38,39 | 43,41 |  |  |
| 24 | 1.2.16 | Prioritize all requirements | 1d? | 2006-08-21 | 2006-08-21 | 2000-10-25 | 2000-10-27 | 16h? | 24d |  |  | Project Manager | 8h | 3190 | 40 | 42 |  | GI |
| 25 | 1.2.17 | Define new organizational roles and responsibilities | 1d? | 2006-08-21 | 2006-08-21 | 2000-10-17 | 2000-10-17 | 0d? | 24d |  |  | Change Management Coordinator | 8h | 4010 | 22,44 | 31,46 |  |  |
| 26 | 1.2.18 | Develop internal training strategy and materials for new roles and responsibilities | 1d? | 2006-08-21 | 2006-08-21 | 2000-10-17 | 2000-10-17 | 0d? | 24d |  |  | Documentation and Training Developer | 8h | 4030 | 46 |  |  |  |

Notes:
- 2: Establish common ground rules for project execution. / The kickoff meeting should introduce team members and set project expectations. This meeting will cover issues such as objectives, deliverables, communication and issue resolution. It is also a good time to review the VSM and ensure a unified approach. / Text4: CRM, CBO, BA, BAR, SME, CM, CP, DBA, DEV, DT, GD, LA, QA, SA, TA, TL
- 3: Document repository? / Project code repository? / Communication plans and protocols?
- 7: Inserted 11/20 in order to ensure that equipment will be ordered early enough
- 10: Note: Roles removed from this task include DBA,SME,BAR,BA / This information should have been captured during the previous phases, and should be recorded in several artifacts including: / ·Project Charter / ·Project Preparation Survey / ·Pre-sales checklist (if it was used), / ·Project Kickoff worksheet, / ·VSM Questions for Gathering Client Requirements. / Business requirements represent the objectives of the organization or the customer requesting the application/site. Identify the business initiatives the business is undertaking and how those initiatives will affect the site. The customer should provide business experts to help define these requirements. / Text4: CBO, BAR, BA, SME
- 11: VPS Advanced Service offerings consist of domain experts and tools focused on facilitating project teams, typically in more complex implementations. A Specialized Service team brings expertise covering methodology, technology and project planning. The teams consist of core members as well as regional VPS members. The dedicated core team consists of leads and consultants. The extended team consists of the core team plus regional VPS representatives that are the local regional experts for the Specialized Service. As the Specialized Service becomes more mature, the number of regional representatives will grow. / Text4: TL, BAR
- 12: Note: Text was formerly "Define site target audience(s)" / Research should be conducted on users and user groups. Identify as many groups as possible, including the organization's owner, internal users, external users, suppliers, consumers… A user profile should be created for each group. / RMS projects may be driven by the site audience defined. This definition may also help drive the segmenting process. / Text4: SME, BA
- 13: > Rewrite task name as Define Content Display (CDA) application / Pat - Partner Services NACDS Requirement documents. / Define what functionality will be exposed to the end user. / Text4: TL, SME, BA
- 15: Note: Include -"Define third-party information sources" formerly 3160 / Include "Define Syndication Requirements" formerly 3140 / RMS: 3rd party data sources may need to be extended to include customer provided data (i.e. transactions) or outside demographic data. / Original Note: / Identify content and its lifecycle. How will the Web-based application be used to create, modify, and publish content. Identify how workflow will control the movement of content through a review/approval process to ensure that it meets business objectives. Create a staging strategy. How will content be managed from one environment to another within an organization. Create an aggregation strategy that defines how content is collected from disparate sources and combined in meaningful ways. Create a syndication strategy that defines how content is made available in a controlled way to affiliate organizations. / Text4: TL, SME, BA
- 16: Define the what the content is, how, and when it will be managed, and by who. / The decisions made in the course of this task may benefit from an Advanced Services workshop. / Text4: TL, SME, BA
- 17: 12/13 Check links to constructing workflow solution / Not every project uses workflow but if they do you must manage all groups, users, assets and steps. / Consider workflow impacts on Comm Server. / Define RMS workflow requirements to support campaign assets. / Text4: TL, SME, BA
- 20: Every engagement should address security at some level. Take into consideration the CMA, CDA, third party tools… Map the content to applicable permissions or roles. / Text4: TL, SME, BAR, SA
- 21: Be very careful not to fall into the trap of doing physical modeling during this phase. The intent of this phase is to identify the data and type of data to be used. Do not design database schemas/tables in the Requirements phase. / Text4: TL,DBA
- 22: Identify different types of performance…page throughput, number of user, peak vs. average... what is the profile during the day? During the night? Also address 3rd party performance issues. / Identify data latency timeframes for collecting and analyzing RMS data. Even if data is collected daily it may get processed weekly. Does that meet the clients needs. / Text4: BA, BAR, DBA
- 23: Text4: TL, BA, DBA
- 24: Assign an implementation priority to each requirement that indicates how essential the requirement is to a particular release. Prioritization is particularly critical if the project is time-boxed or an incremental development in which the release schedules are tight and immovable. PLEASE NOTE: the requirements document should provide zero room for ambiguity. There should be no "optional" choices written into the document. Priorities are assigned to balance the project scope against the constraints of schedule, budget, staff resources, and quality goals. The finalized requirements document should only contain definitions of what will be in the release. / Text4: TL, CBO, BAR, BA
- 25: Note: In order to make it clear that it is the client that is doing this, the text was reworked from the former "Define new roles and responsibilities" / Text4: CBO, SME, BAR
- 26: Develop CMA site training materials, including developing training plan, materials, schedule / Text4: CBO, CM, LA

| ID | WBS | Task | Duration | Start | Finish | Baseline start | Baseline finish | Baseline duration | Total slack | Constraint | Resources | Work | Text1 | Text3 | Text5 | Text6 |
| --- | --- | --- | --- | --- | --- | --- | --- | --- | --- | --- | --- | --- | --- | --- | --- | --- |
| 27 | 2 | **Design** | 1d? | 2006-08-21 | 2006-08-21 | 2000-10-02 | 2000-11-01 | 22.88d? | 0d | as late as possible |  | 104h | new |  |  |  |
| 28 | 2.1 | Set up the development environment | 1d? | 2006-08-21 | 2006-08-21 | 2000-10-27 | 2000-10-27 | 1h? | 24d |  | Technical Architect | 8h | 5040 | GD | 15 | 83 |
| 29 | 2.2 | Review general design issues | 1d? | 2006-08-21 | 2006-08-21 | 2000-10-27 | 2000-10-30 | 8h? | 24d |  | Technical Architect | 8h | 5080 |  | 82 | 84 |
| 30 | 2.3 | Identify potential for using 3rd-party solutions to reduce the development time | 1d? | 2006-08-21 | 2006-08-21 | 2000-10-30 | 2000-10-30 | 0d? | 24d |  | Technical Architect | 8h | 5090 |  | 83 | 86,94 |
| 31 | 2.4 | Design graphical user interface, HTML designs, and site map | 1d? | 2006-08-21 | 2006-08-21 | 2000-10-09 | 2000-10-09 | 1h? | 24d |  | Graphic Designer | 8h | 5070 | GD | 80 | 86 |
| 32 | 2.5 | Design Workflow Solution | 1d? | 2006-08-21 | 2006-08-21 | 2000-10-30 | 2000-10-30 | 1h? | 24d |  | Technical Lead | 8h | 5060 |  | 94,62 | 87,102 |
| 33 | 2.6 | Develop Functional Spec | 1d? | 2006-08-21 | 2006-08-21 | 2000-10-30 | 2000-10-30 | 1h? | 24d |  | Technical Lead | 8h | 5200 |  | 94,95,86 | 101,122 |
| 34 | 2.7 | Design Content Display Application | 1d? | 2006-08-21 | 2006-08-21 | 2000-10-30 | 2000-10-31 | 1d? | 24d |  | Technical Lead | 8h |  |  | 85,84 | 89,90,91,92,93,87,88 |
| 35 | 2.8 | Design profiling and profile instrumentation | 1d? | 2006-08-21 | 2006-08-21 | 2000-10-31 | 2000-10-31 | 1h? | 24d |  | Technical Lead | 8h | 5180 |  | 86 | 102 |
| 36 | 2.9 | Design Content Management Application | 1d? | 2006-08-21 | 2006-08-21 | 2000-10-30 | 2000-10-30 | 1h? | 24d |  | Technical Lead | 8h | 5110 | PI WD GD | 84 | 95,96,97,87 |
| 37 | 2.10 | Define legacy data strategy | 1d? | 2006-08-21 | 2006-08-21 | 2000-10-27 | 2000-10-27 | 1h? | 24d |  | Database Administrator | 8h | 5160 | GD | 98 | 102,120 |
| 38 | 2.11 | Design third party integrations | 1d? | 2006-08-21 | 2006-08-21 | 2000-10-27 | 2000-10-27 | 1h? | 24d |  | Technical Architect | 8h | 5100 | PI WD GD | 80 | 102,123 |
| 39 | 2.12 | Complete Detailed Design Document | 1d? | 2006-08-21 | 2006-08-21 | 2000-11-01 | 2000-11-01 | 1h? | 24d |  | Technical Architect | 8h | 5210 |  | 100,88,89,90,91,92,93,95,96,97,99,98,101 | 109,122 |
| 40 | 2.13 | Design work complete | 1d? | 2006-08-21 | 2006-08-21 | 2000-11-01 | 2000-11-01 | 0d? | 24d |  | Project Manager | 8h | new |  | 109 | 112 |
| 41 | 3 | **Development** | 1d? | 2006-08-21 | 2006-08-21 | 2000-10-17 | 2000-11-08 | 16d? | 0d | as late as possible |  | 48h | new |  |  |  |
| 42 | 3.1 | Conduct Implementation Kickoff | 1d? | 2006-08-21 | 2006-08-21 | 2000-11-01 | 2000-11-02 | 8h? | 24d |  | Technical Lead | 8h | 7010 |  | 112 | 120,121,122,123,124,125,119,115,116 |
| 43 | 3.2 | Implement the System Architecture | 1d? | 2006-08-21 | 2006-08-21 | 2000-11-01 | 2000-11-02 | 1d? | 24d |  | Technical Architect | 8h |  |  | 109 | 124 |
| 44 | 3.3 | Implement application integrations | 1d? | 2006-08-21 | 2006-08-21 | 2000-11-02 | 2000-11-03 | 8h? | 24d |  | Developer | 8h | 7040 | GD | 114 | 126 |
| 45 | 3.4 | Implement external interfaces | 1d? | 2006-08-21 | 2006-08-21 | 2000-11-02 | 2000-11-03 | 8h? | 24d |  | Developer | 8h | 7070 |  | 114,100 | 126 |
| 46 | 3.5 | Implement Security Strategy | 1d? | 2006-08-21 | 2006-08-21 | 2000-11-02 | 2000-11-03 | 8h? | 24d |  | Developer | 8h | 7080 |  | 114,105,117 | 126 |
| 47 | 3.6 | Perform requirements testing | 1d? | 2006-08-21 | 2006-08-21 | 2000-11-08 | 2000-11-08 | 1h? | 24d |  | Quality Assurance | 8h | 8040 | GI | 128 | 132 |
| 48 | 4 | **Classes** | 1d? | 2006-08-21 | 2006-08-21 | 2000-11-08 | 2000-11-14 | 4.25d? | 0d | as late as possible |  | 72h | new |  |  |  |
| 49 | 4.1 | Launch the beta test version of the site | 1d? | 2006-08-21 | 2006-08-21 | 2000-11-08 | 2000-11-09 | 8h? | 24d |  | Technical Lead | 8h | 8050 |  | 129,130 | 133,135,134 |
| 50 | 4.2 | Perform Performance Tests | 1d? | 2006-08-21 | 2006-08-21 | 2000-11-09 | 2000-11-09 | 1h? | 24d |  | Quality Assurance | 8h | 8060 |  | 132 | 136 |
| 51 | 4.3 | Provide Vignette solution training | 1d? | 2006-08-21 | 2006-08-21 | 2000-11-09 | 2000-11-09 | 1h? | 24d |  | Documentation and Training Developer | 8h | 8110 |  | 132,77 | 136 |
| 52 | 4.4 | Execute Organizational Change Management Plan with Client | 1d? | 2006-08-21 | 2006-08-21 | 2000-11-09 | 2000-11-09 | 0d? | 24d |  | Client Business Owner | 8h | 8080 |  | 76,132,118 | 136 |
| 53 | 4.5 | Testing and predelivery preparation complete | 1d? | 2006-08-21 | 2006-08-21 | 2000-11-09 | 2000-11-09 | 0d? | 24d |  | Project Manager | 8h | 7120 |  | 135,134,133 | 137 |
| 54 | 4.6 | Launch the Vignette solution to the Internet | 1d? | 2006-08-21 | 2006-08-21 | 2000-11-09 | 2000-11-09 | 1h? | 24d |  | Logistics Administrator | 8h | 8090 |  | 81,136 | 138,139 |
| 55 | 4.7 | Archive full copy of Vignette solution and project detail | 1d? | 2006-08-21 | 2006-08-21 | 2000-11-09 | 2000-11-13 | 16h? | 24d |  | Project Manager | 8h | 8100 |  | 137 | 140 |
| 56 | 4.8 | Transition solution ownership to supporting organization | 1d? | 2006-08-21 | 2006-08-21 | 2000-11-09 | 2000-11-10 | 8h? | 24d |  | Project Manager | 8h | 8120 |  | 137 | 140 |
| 57 | 4.9 | Perform Project Debriefing | 1d? | 2006-08-21 | 2006-08-21 | 2000-11-13 | 2000-11-14 | 8h? | 24d |  | Project Manager | 8h | 8130 |  | 138,139 |  |

Notes:
- 28: >Remove the predessesor milestone / Pred should be get the stuff and make sure your licenses are legal / Note: Include "Assess platform and software environment" previously 5030 / (Merged with VSM 5030) / Include "Check versions and compatibility" / Original notes: / It is very beneficial to create a development environment that mirrors the deployment environment. At this point the development environment should have been created by either an SE, the customer or VPS. / Comm Server should be configured for the "development environment" until after testing is complete. All pushes should go to a single internal location. / Text4: SA, DBA
- 30: Note: Need to see 5090.01 in VPS version as Marsha references it / Text4: TL,PM
- 31: > add site map to this section / > Site map and wireframes may be sufficient, in some cases / Note: include "Review storyboard or create if it does not exist" Previously VSM 5050 / (Merged with VSM 5050) / In many instances, the design firm will provide a storyboard. All that is needed to continue forward this time is wireframes, HTML can be incorporated later. / Storyboard should have been created by client or design firm during phase 3000. / Original Notes: / In many instances the customer will request the project team participate with design team. What is important at this point is the functionality and general page layout (e.g. this can be a V/5 component, that cannot). / Text4: TA, CBO
- 32: Text4: TA
- 33: > Func spec is the screens and how they are interacted with / Pred should be HTML design / Define graphical user interface and HTML designs / Func spec template should reflect for common solution / Text4: TA
- 35: Text4: TA
- 36: CMA is an application, customer deliverable. Should adhere to look and feel requirements and interface design. / Most times the design will be provided by the customer. / Text4: TA
- 37: In order to register an asset, the schema must have a single column primary key. If it does not, add another auto number numeric key column for accessing to the table. Defining and using legacy data is a very difficult task. Time should be allocated and expertise needs to be available. / Text4: TL, TA, BA, LA
- 38: Ensure that the correct technical skills are available for any third-party integration work. Do early to reduce risks. Security measures should be considered. / Text4: TL
- 39: Text4: TL
- 42: Text4: CRM, CBO, BA, BAR, SME, CM, CP, DBA, DEV, DT, GD, LA, PM, QA, SA, TA
- 43: Text4: TL, SA
- 44: Do early to discover hidden issues. Example would be Ad server, chat server, ….third party integrations. Customer should have third party integration experts available to project team. Consult the KC for prior Vignette integrations. / Text4: TL, TA
- 45: Text4: TL, TA
- 46: Text4: TL, TA, SA
- 47: A two step approach should be used: the development team should make the first approval, next the customer should step through the Requirements Document / Text4: TL, DEV, TA
- 49: Be sure to include people that are not part of the development team . Include CMA users who will and will not be inputting content. Do the same for the CDA. / Text4: QA, DEV, TA
- 50: Note: Include "Evaluate performance results and identify problem areas" VSM 8070 / (Merged with VSM 8070) / "Review template measurement tools printouts. May or may not be a formal process. If a bug tracking system is in use, review logs." / Text4: TL, DEV, TA
- 51: Text4: LA
- 52: Text4: PM, LA
- 53: Note: Formerly "Update project plan, schedule"
- 54: Text4: TL
- 55: Text4: TL
- 56: Note: Formerly "Transition Ownership of Vignette solution and Process to Client or Partner" / Text4: CBO, LA
- 57: Very important step. Share best practices, knowledge…. / Text4: CRM, CBO, BA, BAR, SME, CM, CP, DBA, DEV, DT, GD, LA, QA, SA, TA, TL
