# VSM_3.0

Schedule from MS Project, 2000-10-02 to 2000-11-29.
Vignette Corporation

## Calendars

- Standard: Mon-Fri 08:00-12:00, 13:00-17:00; Sat-Sun off.

## Resources

| Resource | Group | Notes |
| --- | --- | --- |
| Project Manager | Consultive | Project management and deliverables |
| Client Relationship Manager | Consultive | Client relationship management |
| Business Subject Matter Expert | Client | Source for business requirements |
| Technical Lead | Development | Application design |
| Logistics Administrator | Client | Coordinates the schedule of all tasks associated with the release implementation. |
| Documentation and Training Developer | Client | Documentation and training |
| Technical Architect | Development | Technical architecture and application integration |
| Client Business Owner | Client | Primary client contact |
| System Administrator | Client | Technical operation, configuration, and security |
| Database Administrator | Client | Database creation and administration |
| Business Analyst | Consultive | Development of functional requirements |
| Business Architect | Consultive | Requirements gathering and analysis |
| Change Management Coordinator | Client | Coordinates all tasks associated with transitioning to a new organizational structure. |
| Quality Assurance | Development | Test planning and execution |
| Developer | Development | Application development |
| Content Publisher or Technical Librarian | Client | Procedures for adding and updating content |
| Graphic Designer | Client | Graphical design of the site |

## Schedule

| ID | WBS | Task | Type | Duration | Start | Finish | Predecessors | Baseline start | Baseline finish | Baseline duration | Total slack | Free slack | Resources | Work | Text1 | Text3 | Text6 | Text5 | Text2 |
| --- | --- | --- | --- | --- | --- | --- | --- | --- | --- | --- | --- | --- | --- | --- | --- | --- | --- | --- | --- |
| 1 | 1 | **Discovery** |  | 21.12d? | 2000-10-02 08:00 | 2000-10-31 09:00 |  | 2000-10-02 08:00 | 2000-10-26 17:00 | 19d? | 0d |  |  | 200h | new |  |  |  |  |
| 2 | 1.1 | Gather and document client background information |  | 1d? | 2000-10-02 08:00 | 2000-10-02 17:00 |  | 2000-10-02 08:00 | 2000-10-02 17:00 | 1d? | 0d |  | Project Manager | 8h | 1020.01 | GD | 3,4,5 |  |  |
| 3 | 1.2 | Identify client Executive Sponsorship | milestone | 0d? | 2000-10-02 17:00 | 2000-10-02 17:00 | 2 | 2000-10-02 17:00 | 2000-10-02 17:00 | 0d? | 4d |  | Client Relationship Manager |  | 1010.03 | GI | 10 |  |  |
| 4 | 1.3 | Begin Tracking Items in the Project Manager To Do List | milestone | 0d? | 2000-10-02 17:00 | 2000-10-02 17:00 | 2 | 2000-10-02 17:00 | 2000-10-02 17:00 | 0d? | 29.62d |  | Project Manager |  | new |  | 78 |  |  |
| 5 | 1.4 | Document High-Level Project Goals and Objectives in the Project Charter |  | 2d? | 2000-10-03 08:00 | 2000-10-04 17:00 | 2 | 2000-10-03 08:00 | 2000-10-04 17:00 | 2d? | 0d |  | Project Manager | 16h | 1020.03 | CD GD | 6,7,9,51,20 |  |  |
| 6 | 1.5 | Present Vignette and Partner Solutions that Will Accelerate Development and Reduce Risks | milestone | 0d | 2000-10-04 17:00 | 2000-10-04 17:00 | 5 | 2000-10-04 17:00 | 2000-10-04 17:00 | 0d | 2d |  | Client Relationship Manager |  | 1040 |  | 10 |  |  |
| 7 | 1.6 | Perform Preliminary Effort Scoping of the Program, and Identify Client Resources for the Project |  | 2d? | 2000-10-05 08:00 | 2000-10-06 17:00 | 5 | 2000-10-05 08:00 | 2000-10-06 17:00 | 2d? | 0d |  | Project Manager | 16h | 1060 | WD | 12,10,8,74,75 |  |  |
| 8 | 1.7 | Identify training needs and schedule Vignette training and any third party training that is required | milestone | 0d? | 2000-10-06 17:00 | 2000-10-06 17:00 | 7 | 2000-10-06 17:00 | 2000-10-06 17:00 | 0d? | 32.75d | 20.25d | Project Manager |  | 1030 | GI | 77 |  |  |
| 9 | 1.8 | Perform preliminary technical scoping of program |  | 2d? | 2000-10-05 08:00 | 2000-10-06 17:00 | 5 | 2000-10-05 08:00 | 2000-10-06 17:00 | 2d? | 0d |  | Technical Architect | 16h | 1070 | PD WD | 12,10 |  |  |
| 10 | 1.9 | Develop contractual agreement |  | 1d? | 2000-10-09 08:00 | 2000-10-09 17:00 | 7, 9, 3, 6 | 2000-10-09 08:00 | 2000-10-09 17:00 | 1d? | 0d |  | Project Manager | 8h | 1090 |  | 11,12 | 7,9,3,6 |  |
| 11 | 1.10 | Agreement signed by customer | milestone | 0d? | 2000-10-09 17:00 | 2000-10-09 17:00 | 10 | 2000-10-09 17:00 | 2000-10-09 17:00 | 0d? | 9d | 5d | Client Relationship Manager |  | new |  | 14 | 10 |  |
| 12 | 1.11 | Define Program Plan, especially if there are multiple projects involved |  | 1d? | 2000-10-10 08:00 | 2000-10-10 17:00 | 7, 9, 10 | 2000-10-10 08:00 | 2000-10-10 17:00 | 1d? | 0d |  | Project Manager | 8h | 1100 | WI | 16,14,13 | 7,9,10 |  |
| 13 | 1.12 | Identify project team |  | 4d? | 2000-10-11 08:00 | 2000-10-16 17:00 | 12 | 2000-10-11 08:00 | 2000-10-16 17:00 | 4d? | 4d | 0d | Project Manager | 32h | 2080 | GD | 14 | 12 | Need reference in user guide to Team Role Model Document. |
| 14 | 1.13 | Conduct Project Kickoff Meeting |  | 4d? | 2000-10-19 08:00 | 2000-10-24 17:00 | 12, 11, 13 | 2000-10-17 08:00 | 2000-10-20 17:00 | 4d? | 3.25d | 0d | Project Manager | 32h | 2010 |  | 15 | 12,11,13 |  |
| 15 | 1.14 | Acquire the Equipment, Supplies, and Facilities That Will Be Required for the Project Team |  | 4d? | 2000-10-25 09:00 | 2000-10-31 09:00 | 14 | 2000-10-23 08:00 | 2000-10-26 17:00 | 4d? | 3.25d | 0d | Project Manager | 32h | new |  | 82 | 14 | Add coresponding line to Project Manager to do list |
| 16 | 1.15 | Develop Project Management Plan |  | 2d? | 2000-10-17 08:00 | 2000-10-18 17:00 | 12 | 2000-10-11 08:00 | 2000-10-12 17:00 | 2d? | 0d |  | Project Manager | 16h | 2020 |  | 17 | 12 |  |
| 17 | 1.16 | Review Project Management Plan |  | 2d? | 2000-10-19 08:00 | 2000-10-20 17:00 | 16 | 2000-10-13 08:00 | 2000-10-16 17:00 | 2d? | 0d |  | Client Business Owner | 16h | 2120 |  | 19 | 16 |  |
| 18 | 2 | **Analysis** |  | 25.75d? | 2000-10-09 08:00 | 2000-11-13 15:00 |  | 2000-10-09 08:00 | 2000-10-27 14:00 | 14.62d? | 10d |  |  | 182h | new |  |  |  |  |
| 19 | 2.1 | Begin the Requirements Definition process | milestone | 0d? | 2000-10-20 17:00 | 2000-10-20 17:00 | 17 | 2000-10-16 17:00 | 2000-10-16 17:00 | 0d? | 0d |  | Project Manager |  | new |  | 20 | 17 |  |
| 20 | 2.2 | Document the client's business objectives in the Requirements definition. | milestone | 0d? | 2000-10-20 17:00 | 2000-10-20 17:00 | 5, 19 | 2000-10-16 17:00 | 2000-10-16 17:00 | 0d? | 0d |  | Project Manager |  | 3010 | PD WD | 22,29,21 | 5,19 |  |
| 21 | 2.3 | Assess need for Vignette Advanced Services help defining requirements |  | 1h? | 2000-10-25 08:00 | 2000-10-25 09:00 | 20 | 2000-10-17 08:00 | 2000-10-17 09:00 | 1h? | 2.88d | 0d | Project Manager | 1h | 3070 | PD | 24,25,26,27,30,31,32 | 20 |  |
| 22 | 2.4 | Define user classes |  | 1h? | 2000-10-27 09:00 | 2000-10-27 10:00 | 20 | 2000-10-17 08:00 | 2000-10-17 09:00 | 1h? | 0d |  | Business Architect | 1h | 3030 | PD WD | 23,33,35,44,45 | 20 |  |
| 23 | 2.5 | Define Content Display Application (CDA) Requirements |  | 1h? | 2000-10-27 10:00 | 2000-10-27 11:00 | 22 | 2000-10-17 09:00 | 2000-10-17 10:00 | 1h? | 0.62d | 0d | Business Architect | 1h | 3050 | PI GD | 24,25,26,27 | 22 |  |
| 24 | 2.6 | Define Globalization requirements |  | 1h? | 2000-11-02 11:00 | 2000-11-02 12:00 | 21, 23 | 2000-10-17 10:00 | 2000-10-17 11:00 | 1h? | 0.88d | 0d | Business Architect | 1h | 3080 | WD | 28 | 21,23 |  |
| 25 | 2.7 | Define RMS Requirements |  | 1h? | 2000-11-02 11:00 | 2000-11-02 12:00 | 21, 23 | 2000-10-17 10:00 | 2000-10-17 11:00 | 1h? | 0.88d | 0d | Business Architect | 1h | 3125 |  | 28 | 21,23 |  |
| 26 | 2.8 | Define Personalization Requirements |  | 16h? | 2000-10-27 11:00 | 2000-10-31 11:00 | 21, 23 | 2000-10-17 10:00 | 2000-10-19 10:00 | 16h? | 3d | 2.12d | Business Architect | 16h | 3100 | PD FD GD | 28 | 21,23 |  |
| 27 | 2.9 | Define Multi-Channel (Including Wireless) Requirements |  | 16h? | 2000-10-31 11:00 | 2000-11-02 11:00 | 21, 23 | 2000-10-17 10:00 | 2000-10-19 10:00 | 16h? | 1d | 0.12d | Business Architect | 16h | 3120 | PD WD GD | 28 | 21,23 |  |
| 28 | 2.10 | Define E-commerce Requirements |  | 1h? | 2000-11-02 11:00 | 2000-11-02 12:00 | 22 | 2000-10-17 09:00 | 2000-10-17 10:00 | 1h? | 0.88d | 0d | Business Architect | 1h | 3130 | GI | 36,37 | 22 |  |
| 29 | 2.11 | CDA Requirements Complete | milestone | 0d? | 2000-11-02 12:00 | 2000-11-02 12:00 | 24, 25, 26, 28, 27 | 2000-10-19 10:00 | 2000-10-19 10:00 | 0d? | 0.88d |  | Project Manager |  | new |  | 36,37 | 24,25,26,27 |  |
| 30 | 2.12 | Define Content Production Requirements |  | 1h? | 2000-10-23 08:00 | 2000-10-23 09:00 | 20 | 2000-10-17 08:00 | 2000-10-17 09:00 | 1h? | 7.12d | 2d | Business Architect | 1h | 3090 | PI CD GD | 31,30,32 | 20 | Switched with Define CMA requirements |
| 31 | 2.13 | Define CMA requirements |  | 16h? | 2000-10-25 09:00 | 2000-10-27 09:00 | 21, 30 | 2000-10-17 09:00 | 2000-10-19 09:00 | 16h? | 5.12d |  | Business Architect | 16h | 3060 | PI GD | 32,31 | 21,29 | Switched with Define Content Production Requirements |
| 32 | 2.14 | Define the Workflow Requirements |  | 1h? | 2000-11-03 10:00 | 2000-11-03 11:00 | 21, 30, 31, 45 | 2000-10-19 09:00 | 2000-10-19 10:00 | 1h? | 0d |  | Business Architect | 1h | 3040 | PI CD GD | 32 | 21,29,30,45 |  |
| 33 | 2.15 | CMA Requirements Complete | milestone | 0d? | 2000-11-03 11:00 | 2000-11-03 11:00 | 21, 30, 31, 32 | 2000-10-19 10:00 | 2000-10-19 10:00 | 0d? | 0d |  | Project Manager |  | new |  | 36,37 | 21,29,30,31 |  |
| 34 | 2.16 | Define Requirements for Third-Party Integrations |  | 1d? | 2000-10-09 08:00 | 2000-10-09 17:00 | 9 | 2000-10-09 08:00 | 2000-10-09 17:00 | 1d? | 18.25d | 13.25d | Technical Architect | 8h |  |  |  |  |  |
| 35 | 2.17 | Define Security Requirements |  | 1h? | 2000-10-27 10:00 | 2000-10-27 11:00 | 22, 34 | 2000-10-17 09:00 | 2000-10-17 10:00 | 1h? | 5d |  | Business Analyst | 1h | 3150 | GI | 36,37 | 22 |  |
| 36 | 2.18 | Define Logical Data Model |  | 16h? | 2000-11-03 11:00 | 2000-11-07 11:00 | 29, 33, 35 | 2000-10-19 10:00 | 2000-10-23 10:00 | 16h? | 0d |  | Business Analyst | 16h | 3180 | PD WI GD | 38 | 28,32,33,35 |  |
| 37 | 2.19 | Define Key Performance Indicators |  | 1h? | 2000-11-03 11:00 | 2000-11-03 12:00 | 29, 33, 35 | 2000-10-19 10:00 | 2000-10-19 11:00 | 1h? | 1.88d | 0d | Technical Lead | 1h | 3170 | PD WD GD | 38,39 | 28,32,33,35 |  |
| 38 | 2.20 | Refine Initial Hardware Recommendations Based on Performance and Availability Requirements |  | 16h? | 2000-11-07 11:00 | 2000-11-09 11:00 | 36, 37 | 2000-10-23 10:00 | 2000-10-25 10:00 | 16h? | 0d |  | Technical Architect | 16h | 3210 | WI FD | 40 | 36,37 |  |
| 39 | 2.21 | Define Post-Launch Success Criteria |  | 16h? | 2000-11-03 13:00 | 2000-11-07 12:00 | 37 | 2000-10-19 11:00 | 2000-10-23 11:00 | 16h? | 1.88d |  | Client Business Owner | 16h | 3200 | PI GD | 40 | 37 |  |
| 40 | 2.22 | Complete Requirements Document |  | 1h? | 2000-11-09 11:00 | 2000-11-09 12:00 | 38, 39 | 2000-10-25 10:00 | 2000-10-25 11:00 | 1h? | 0d |  | Business Architect | 1h | 3220 |  | 43,41 | 38,39 |  |
| 41 | 2.23 | Prioritize all requirements |  | 16h? | 2000-11-09 13:00 | 2000-11-13 12:00 | 40 | 2000-10-25 11:00 | 2000-10-27 11:00 | 16h? | 0d |  | Project Manager | 16h | 3190 | GI | 42 | 40 |  |
| 42 | 2.24 | Review and get client signoff of Requirements document |  | 1h? | 2000-11-13 13:00 | 2000-11-13 14:00 | 41 | 2000-10-27 11:00 | 2000-10-27 12:00 | 1h? | 0d |  | Project Manager | 1h | 3230 |  | 48 | 41 |  |
| 43 | 2.25 | Begin Requirements Test Plan document |  | 1h? | 2000-11-09 13:00 | 2000-11-09 14:00 | 40 | 2000-10-25 11:00 | 2000-10-25 12:00 | 1h? | 14.25d |  | Quality Assurance | 1h | 3240 |  |  | 40 |  |
| 44 | 2.26 | Design new E-business management processes |  | 4d? | 2000-10-27 10:00 | 2000-11-02 10:00 | 22, 7 | 2000-10-17 09:00 | 2000-10-17 09:00 | 0d? | 0d |  | Change Management Coordinator | 32h | 4020 | WD GD | 45 | 22 |  |
| 45 | 2.27 | Define new organizational roles and responsibilities |  | 1d? | 2000-11-02 10:00 | 2000-11-03 10:00 | 22, 44 | 2000-10-17 09:00 | 2000-10-17 09:00 | 0d? | 0d |  | Change Management Coordinator | 8h | 4010 |  | 31,46 | 22,44 |  |
| 46 | 2.28 | Define organizational change management approach |  | 1d? | 2000-11-03 10:00 | 2000-11-06 10:00 | 45 | 2000-10-17 09:00 | 2000-10-17 09:00 | 0d? | 12.5d | 0d | Change Management Coordinator | 8h | 4040 |  | 47 | 45 |  |
| 47 | 2.29 | Develop internal training strategy and materials for new roles and responsibilities | milestone | 0d? | 2000-11-06 10:00 | 2000-11-06 10:00 | 46, 8 | 2000-10-17 09:00 | 2000-10-17 09:00 | 0d? | 12.5d | 0d | Documentation and Training Developer |  | 4030 |  |  | 46 |  |
| 48 | 2.30 | Update Project Management Plan, and Verify that All Items on the Project Manager To Do List Have Been Addressed |  | 1h? | 2000-11-13 14:00 | 2000-11-13 15:00 | 42, 4 | 2000-10-27 13:00 | 2000-10-27 14:00 | 1h? | 0d |  | Project Manager | 1h | 3250 |  |  | 42 |  |

Notes:
- 2: 12/13 >> Formerly "Transfer knowledge from sales cycle" / Notes: Replaces task 1020, which is deleted due to redundancy. This is an entry criteria for this phase. If this step is skipped, the entry criteria becomes "Document key client …" / Understand any preconceptions that the customer may have as a result of the sales cycle. Consider a conference call with Sales to capture all relevant client information. / If any of the functionality offered by the Specialized Services will be implemented, involve the Specialized Service for during the transfer of knowledge. Clarify the customer's understanding of the project. / It is not uncommon for the Globalization Specialized Service to be utilized before the tool is bought or VPS is engaged. / Text4: CRM
- 3: Note: Has been made a milestone / Identify an executive sponsor for the program and/or every project. Typically there will be a customer who sponsors the project and foots the bill, and there will be a technical person who is in charge of the project's success. Identify who has ultimate say-so. / It is very important that the sponsor understands the magnitude of the project. If the project is global, the project team will be much more diverse and the scope of the project will significantly increase. / Text4: PM
- 4: Note: New task that introduces the to do list earlier in the project cycle.
- 5: Note: Verify that Project Charter is associated with this task / Text4: CRM
- 6: This presentation will formally introduce and potentially sell Solution Accelerator packages and Specialized Services to the customer. The value offered generally far outweighs the cost involved. / Text4: PM
- 7: Note: Include "Identify client resources for DBA, SysAdmin roles, developers and business experts" / Which was formerly in task 1080 / Also links to / ·VSM Overview / ·Specialized Services / ·Solution Accelerators / ·Partner Solutions / Text4: CRM, CBO
- 8: Note: This should link to client tasks in the next phase / Identify training needs for the client. Client readiness. Plan early due to lead time. Vignette Training department can provide scheduling and course selection criteria. / RMS custom training is often required for the client to use the Analysis Engine. This needs to be reviewed and scheduled carefully. / Text4: LA
- 9: Note: Resources were "PM,CRM" I suggest TA is more appropriate. / Need to review the H/W requirements closely for RMS. There are platform constraints that need to be met and sizing is always difficult. / Text4: PM, LA
- 10: Notes: Formerly "Develop Proposal/AOW for project" / Complete contractual negotiations (formerly task1050) / Text4: CRM
- 11: Note: CRM is assigned because they are responsible to see this done.
- 12: Smaller organizations might not need a defined program plan, however this is very critical step for enterprise level customers and if time permits should be developed for every project. / Based upon Marsha's input I decided that this task could fulfill either project or program needs, depending upon the scope of the project, and the iterative processes involved. / Text4: CBO, CRM
- 13: Each project team should have clearly defined and experienced leadership, self-motivated team members that are accountable and empowered to act, and all should share a common project vision.
- 14: Establish common ground rules for project execution. / The kickoff meeting should introduce team members and set project expectations. This meeting will cover issues such as objectives, deliverables, communication and issue resolution. It is also a good time to review the VSM and ensure a unified approach. / Text4: CRM, CBO, BA, BAR, SME, CM, CP, DBA, DEV, DT, GD, LA, QA, SA, TA, TL
- 15: Inserted 11/20 in order to ensure that equipment will be ordered early enough
- 16: Note: Actually incorporates 2020 thru 2070
- 17: Even small projects are encouraged to have a Project Management Plan that has been signed off on by the customer. / Text4: PM
- 20: Note: Roles removed from this task include DBA,SME,BAR,BA / This information should have been captured during the previous phases, and should be recorded in several artifacts including: / ·Project Charter / ·Project Preparation Survey / ·Pre-sales checklist (if it was used), / ·Project Kickoff worksheet, / ·VSM Questions for Gathering Client Requirements. / Business requirements represent the objectives of the organization or the customer requesting the application/site. Identify the business initiatives the business is undertaking and how those initiatives will affect the site. The customer should provide business experts to help define these requirements. / Text4: CBO, BAR, BA, SME
- 21: VPS Advanced Service offerings consist of domain experts and tools focused on facilitating project teams, typically in more complex implementations. A Specialized Service team brings expertise covering methodology, technology and project planning. The teams consist of core members as well as regional VPS members. The dedicated core team consists of leads and consultants. The extended team consists of the core team plus regional VPS representatives that are the local regional experts for the Specialized Service. As the Specialized Service becomes more mature, the number of regional representatives will grow. / Text4: TL, BAR
- 22: Note: Text was formerly "Define site target audience(s)" / Research should be conducted on users and user groups. Identify as many groups as possible, including the organization's owner, internal users, external users, suppliers, consumers… A user profile should be created for each group. / RMS projects may be driven by the site audience defined. This definition may also help drive the segmenting process. / Text4: SME, BA
- 23: > Rewrite task name as Define Content Display (CDA) application / Pat - Partner Services NACDS Requirement documents. / Define what functionality will be exposed to the end user. / Text4: TL, SME, BA
- 24: Identify and prioritize measurable business goals and long term global business strategy. Identify necessary resources and skills. Identify and recommend a system architecture and database schema for Globalization. Define a migration path from a web site in English (or another source language) to a web site that supports multiple languages. Detail the Internationalization strategies for application code. / Text4: TL, SME, BA
- 25: Those responsible for business requirements and data availability should meet with budget representatives to decide the depth of the RMS strategy. At this point you should discuss the levels of RMS implementation. / Data Sources: / 1. Sessions - OM log (session times) / 2. Profile Marks - V/5 system database (Profile mark hierarchy), OM log (PM event) / 3. Campaigns - V/5 System database (Campaign Definitions and hierarchy), OM log (Campaign Events - Exposures, Responses, Feedback) / 4. Customer/Visitor Summary/Attributes - client supplied / 5. Product/Item hierarchy - client supplied / 6. Transactions (POS) - client supplied / 7. Customer Visitor Mapping - client supplied / 8. Channels/Location Hierarchy - client supplied for locations; v/5 defaults to 7 predefined channels. / Text4: TL, SME, BA
- 26: Personalization requirements should address the following issues: / - Modeling site personalization for core business objectives. / - Targeting content to the appropriate output: browser, web device, platform. / - Profiling visitors to identify their current goals. / - Applying collaborative filtering, segmentation, and analysis tools. / - Identifying personalization key performance indicators and measuring success. / - Deploying personalized applications in a high-performance environment. / - Constructing and deploying business rules. / - Creating sustainable personalization. / Text4: TL, SME, BA
- 27: > Find what the current name is for this adv work shop / In order to understand and document requirements for a web-based e-business solution incorporating Wireless/Multi-channel (MCD), first identify the possibilities that exist for MCD. This is needed to accurately define the business objectives for MCD or assess how the proposed solution will impact the business. MCD can be a confusing topic due to proprietary telecommunications carriers, intermediary service providers, and a multitude of device manufacturers. Successful deployment of multi-channel applications will be critical in both Consumer and B2B environments. / Determine which channels will be used: email, cell phone or pager. / Text4: TL, SME, BA
- 28: >Broken / >Rewrite this to reflect e-series integration. / Text4: TL, SME, BA
- 30: Note: Include -"Define third-party information sources" formerly 3160 / Include "Define Syndication Requirements" formerly 3140 / RMS: 3rd party data sources may need to be extended to include customer provided data (i.e. transactions) or outside demographic data. / Original Note: / Identify content and its lifecycle. How will the Web-based application be used to create, modify, and publish content. Identify how workflow will control the movement of content through a review/approval process to ensure that it meets business objectives. Create a staging strategy. How will content be managed from one environment to another within an organization. Create an aggregation strategy that defines how content is collected from disparate sources and combined in meaningful ways. Create a syndication strategy that defines how content is made available in a controlled way to affiliate organizations. / Text4: TL, SME, BA
- 31: Define the what the content is, how, and when it will be managed, and by who. / The decisions made in the course of this task may benefit from an Advanced Services workshop. / Text4: TL, SME, BA
- 32: 12/13 Check links to constructing workflow solution / Not every project uses workflow but if they do you must manage all groups, users, assets and steps. / Consider workflow impacts on Comm Server. / Define RMS workflow requirements to support campaign assets. / Text4: TL, SME, BA
- 35: Every engagement should address security at some level. Take into consideration the CMA, CDA, third party tools… Map the content to applicable permissions or roles. / Text4: TL, SME, BAR, SA
- 36: Be very careful not to fall into the trap of doing physical modeling during this phase. The intent of this phase is to identify the data and type of data to be used. Do not design database schemas/tables in the Requirements phase. / Text4: TL,DBA
- 37: Identify different types of performance…page throughput, number of user, peak vs. average... what is the profile during the day? During the night? Also address 3rd party performance issues. / Identify data latency timeframes for collecting and analyzing RMS data. Even if data is collected daily it may get processed weekly. Does that meet the clients needs. / Text4: BA, BAR, DBA
- 38: With a clear understanding of the business and performance requirements, refine the initial hardware scoping. This will not be finalized until after the application architecture. The scoping will allow the customer to requisition items that have long order times. Final hardware sizing depends on percentage of caching done in application which has not been completed at this point. / Text4: LA, TL
- 39: Define how and who will establish if all requirements have been met. / Text4: TL, PM, BAR
- 40: Text4: TL, BA, DBA
- 41: Assign an implementation priority to each requirement that indicates how essential the requirement is to a particular release. Prioritization is particularly critical if the project is time-boxed or an incremental development in which the release schedules are tight and immovable. PLEASE NOTE: the requirements document should provide zero room for ambiguity. There should be no "optional" choices written into the document. Priorities are assigned to balance the project scope against the constraints of schedule, budget, staff resources, and quality goals. The finalized requirements document should only contain definitions of what will be in the release. / Text4: TL, CBO, BAR, BA
- 42: >This may move to a later phase, after the Func Spec is complete so that scoping is more exact / The signed requirements document becomes the baseline. Any changes to the document must be made through the change control process. It is very important to ensure that the customer understands the reasoning for the signoff and understands completely the content of the document. / Text4: CBO
- 43: Remember that each requirement is a testable assertion and therefore is the foundation for the acceptance test plan.
- 44: >Re-examine this task in light of changes being made to task 2.20 / The customer must begin reorganizing their business around a Internet-based model. In many cases the customer's business process is very inefficient and must be optimized. The executive sponsor must participate and encourage "buy in" from the people wit / Text4: CBO, SME, BAR
- 45: Note: In order to make it clear that it is the client that is doing this, the text was reworked from the former "Define new roles and responsibilities" / Text4: CBO, SME, BAR
- 46: Text4: CBO, SME
- 47: Develop CMA site training materials, including developing training plan, materials, schedule / Text4: CBO, CM, LA
- 48: Note: Text reworked from "Update Project Plan" and Project Lead to do list added as resource / Communicate to client that Project Plan will be finalized after design

| ID | WBS | Task | Type | Duration | Start | Finish | Predecessors | Baseline start | Baseline finish | Baseline duration | Total slack | Free slack | Resources | Work | Text1 | Text5 | Text6 | Text4 | Text3 |
| --- | --- | --- | --- | --- | --- | --- | --- | --- | --- | --- | --- | --- | --- | --- | --- | --- | --- | --- | --- |
| 49 | 3 | **Design** |  | 31.38d? | 2000-10-02 08:00 | 2000-11-14 11:00 |  | 2000-10-02 08:00 | 2000-11-01 16:00 | 22.88d? | 11.5d |  |  | 77h | new |  |  |  |  |
| 50 | 3.1 | Review Project Management Plan and initiate design process | milestone | 0d? | 2000-11-13 15:00 | 2000-11-13 15:00 | 48 | 2000-10-27 14:00 | 2000-10-27 14:00 | 0d? | 0d |  | Project Manager |  | new | 78 | 81,100,98,103,85 |  |  |
| 51 | 3.2 | Initiate Requirements Change Control Process | milestone | 0d? | 2000-11-13 15:00 | 2000-11-13 15:00 | 50, 42 | 2000-10-27 14:00 | 2000-10-27 14:00 | 0d? | 8d |  | Project Manager |  | 5020 | 72,80 | 137 | BAR, TL |  |
| 52 | 3.3 | Set up the development environment |  | 1h? | 2000-10-31 09:00 | 2000-10-31 10:00 | 15 | 2000-10-27 08:00 | 2000-10-27 09:00 | 1h? | 3.25d | 0d | Technical Architect | 1h | 5040 | 15 | 83 | SA, DBA | GD |
| 53 | 3.4 | Review general design issues |  | 8h? | 2000-10-31 10:00 | 2000-11-01 10:00 | 52 | 2000-10-27 09:00 | 2000-10-30 09:00 | 8h? | 3.25d | 0d | Technical Architect | 8h | 5080 | 82 | 84 |  |  |
| 54 | 3.5 | Identify potential for using Vignette Solution Accelerators to reduce the development time | milestone | 0d? | 2000-11-01 10:00 | 2000-11-01 10:00 | 53 | 2000-10-30 09:00 | 2000-10-30 09:00 | 0d? | 3.25d | 0d | Technical Architect |  | 5090 | 83 | 86,94 | TL,PM |  |
| 55 | 3.6 | Design graphical user interface, HTML designs, and site map |  | 1h? | 2000-10-09 08:00 | 2000-10-09 09:00 | 7 | 2000-10-09 08:00 | 2000-10-09 09:00 | 1h? | 20.75d | 17.38d | Graphic Designer | 1h | 5070 | 80 | 86 | TA, CBO | GD |
| 56 | 3.7 | Design Workflow Solution |  | 1h? | 2000-11-01 11:00 | 2000-11-01 12:00 | 65 | 2000-10-30 10:00 | 2000-10-30 11:00 | 1h? | 3.38d | 0d | Technical Lead | 1h | 5060 | 94,62 | 87,102 | TA |  |
| 57 | 3.8 | Develop Functional Spec |  | 1h? | 2000-11-01 13:00 | 2000-11-01 14:00 | 65, 56, 55 | 2000-10-30 11:00 | 2000-10-30 12:00 | 1h? | 3.38d | 0d | Technical Lead | 1h | 5200 | 94,95,86 | 101,122 | TA |  |
| 58 | 3.9 | Design Content Display Application |  | 1d? | 2000-11-02 11:00 | 2000-11-03 11:00 | 57, 54 | 2000-10-30 13:00 | 2000-10-31 12:00 | 1d? | 3.25d | 0d | Technical Lead | 8h |  | 85,84 | 89,90,91,92,93,87,88 |  |  |
| 59 | 3.10 | Design profiling and profile instrumentation |  | 1h? | 2000-11-08 13:00 | 2000-11-08 14:00 | 58 | 2000-10-31 13:00 | 2000-10-31 14:00 | 1h? | 3.38d |  | Technical Lead | 1h | 5180 | 86 | 102 | TA |  |
| 60 | 3.11 | Design V/5 Visitor Services |  | 8h? | 2000-11-03 13:00 | 2000-11-06 12:00 | 58 | 2000-10-31 13:00 | 2000-11-01 12:00 | 8h? | 5.5d |  | Technical Lead | 8h | 5185 | 86 | 102 | TA |  |
| 61 | 3.12 | Design RMS Implementation |  | 8h? | 2000-11-06 13:00 | 2000-11-07 12:00 | 58 | 2000-10-31 13:00 | 2000-11-01 12:00 | 8h? | 4.5d |  | Technical Lead | 8h | 5135 | 86 | 102 | TA, DBA, BA |  |
| 62 | 3.13 | Design syndication implementation |  | 1h? | 2000-11-08 13:00 | 2000-11-08 14:00 | 58 | 2000-10-31 13:00 | 2000-10-31 14:00 | 1h? | 3.38d |  | Technical Lead | 1h | 5150 | 86 | 102 | TA | WD GI |
| 63 | 3.14 | Design multi-channel implementations |  | 1d? | 2000-11-07 13:00 | 2000-11-08 12:00 | 58 | 2000-10-31 13:00 | 2000-11-01 12:00 | 1d? | 3.5d |  | Technical Lead | 8h | 5150 | 86 | 102 | TA |  |
| 64 | 3.15 | Design globalization architecture |  | 1h? | 2000-11-08 13:00 | 2000-11-08 14:00 | 58 | 2000-10-31 13:00 | 2000-10-31 14:00 | 1h? | 3.38d |  | Technical Lead | 1h | 5130 | 86 | 102 | TA | GD |
| 65 | 3.16 | Design Content Management Application |  | 1h? | 2000-11-01 10:00 | 2000-11-01 11:00 | 54 | 2000-10-30 09:00 | 2000-10-30 10:00 | 1h? | 3.25d | 0d | Technical Lead | 1h | 5110 | 84 | 95,96,97,87 | TA | PI WD GD |
| 66 | 3.17 | Design static content solution |  | 1h? | 2000-11-08 13:00 | 2000-11-08 14:00 | 65 | 2000-10-30 10:00 | 2000-10-30 11:00 | 1h? | 3.38d |  | Technical Lead | 1h | 5170 | 94 | 102 | TA |  |
| 67 | 3.18 | Define cache management strategy |  | 8h? | 2000-11-01 11:00 | 2000-11-02 11:00 | 65 | 2000-10-30 10:00 | 2000-10-31 10:00 | 8h? | 7.62d |  | Technical Lead | 8h | 5190 | 94 | 102 | TA | FD GD |
| 68 | 3.19 | Design database schema |  | 1h? | 2000-11-13 15:00 | 2000-11-13 16:00 | 50 | 2000-10-27 14:00 | 2000-10-27 15:00 | 1h? | 0d |  | Database Administrator | 1h | 5140 | 80 | 99,102,119 | TL, TA, BA | PD WD GD |
| 69 | 3.20 | Define legacy data strategy |  | 1h? | 2000-11-13 16:00 | 2000-11-13 17:00 | 68 | 2000-10-27 15:00 | 2000-10-27 16:00 | 1h? | 0d |  | Database Administrator | 1h | 5160 | 98 | 102,120 | TL, TA, BA, LA | GD |
| 70 | 3.21 | Design third party integrations |  | 1h? | 2000-11-13 15:00 | 2000-11-13 16:00 | 50 | 2000-10-27 14:00 | 2000-10-27 15:00 | 1h? | 0.12d |  | Technical Architect | 1h | 5100 | 80 | 102,123 | TL | PI WD GD |
| 71 | 3.22 | Client review and approval of Functional Specification document |  | 1h? | 2000-11-01 14:00 | 2000-11-01 15:00 | 57 | 2000-10-30 13:00 | 2000-10-30 14:00 | 1h? | 8.25d | 0d | Client Business Owner | 1h | 5230 | 87 | 102,110 | PM |  |
| 72 | 3.23 | Initiate Functional Specification Change Control Process | milestone | 0d | 2000-11-01 15:00 | 2000-11-01 15:00 | 71 | 2000-10-30 14:00 | 2000-10-30 14:00 | 0d | 8.25d |  | Project Manager |  |  |  |  |  |  |
| 73 | 3.24 | Complete Detailed Design Document |  | 1h? | 2000-11-14 08:00 | 2000-11-14 09:00 | 70, 59, 60, 61, 62, 63, 64, 66, 67, 69, 68, 56, 72 | 2000-11-01 13:00 | 2000-11-01 14:00 | 1h? | 0d |  | Technical Architect | 1h | 5210 | 100,88,89,90,91,92,93,95,96,97,99,98,101 | 109,122 | TL |  |
| 74 | 3.25 | System Architecture Design Process Begins | milestone | 0d? | 2000-11-13 15:00 | 2000-11-13 15:00 | 50 | 2000-10-27 14:00 | 2000-10-27 14:00 | 0d? | 0.25d | 0d | Project Manager |  | new | 80 | 104,105,106,107,108 |  |  |
| 75 | 3.26 | Design network configuration |  | 1h? | 2000-11-13 15:00 | 2000-11-13 16:00 | 74 | 2000-10-27 14:00 | 2000-10-27 15:00 | 1h? | 0.25d | 0d | Technical Architect | 1h | 6010 | 103 | 110 | TL, SA, LA | WD FD GI |
| 76 | 3.27 | Design security strategy |  | 1h? | 2000-11-13 15:00 | 2000-11-13 16:00 | 74 | 2000-10-27 14:00 | 2000-10-27 15:00 | 1h? | 0.25d | 0d | Technical Architect | 1h | 6020 | 103 | 110,124 | TL, SA | WD FI |
| 77 | 3.28 | Design Staging Strategy |  | 1h? | 2000-11-13 15:00 | 2000-11-13 16:00 | 74 | 2000-10-27 14:00 | 2000-10-27 15:00 | 1h? | 0.25d | 0d | Technical Lead | 1h | 6030 | 103 | 110 | TA, LA |  |
| 78 | 3.29 | Design the system to meet availability requirements, including considerations such as redundant systems and failover strategies |  | 1d? | 2000-10-02 08:00 | 2000-10-02 17:00 |  | 2000-10-02 08:00 | 2000-10-02 17:00 | 1d? | 41.88d |  | Technical Architect | 8h |  |  |  | SA, DBA |  |
| 79 | 3.30 | Design backup and recovery strategy |  | 1h? | 2000-11-13 15:00 | 2000-11-13 16:00 | 74 | 2000-10-27 14:00 | 2000-10-27 15:00 | 1h? | 0.25d | 0d | Technical Architect | 1h | 6040 | 103 | 110,129 | TL, SA, DBA, BA, LA |  |
| 80 | 3.31 | Perform capacity planning |  | 1h? | 2000-11-13 15:00 | 2000-11-13 16:00 | 74 | 2000-10-27 14:00 | 2000-10-27 15:00 | 1h? | 0.25d | 0d | Technical Architect | 1h | 6050 | 103 | 110 | TL, SA, DBA, BA | GI |
| 81 | 3.32 | Review System Architecture with client and IT staff |  | 1h? | 2000-11-14 09:00 | 2000-11-14 10:00 | 82, 73 | 2000-11-01 14:00 | 2000-11-01 15:00 | 1h? | 0d |  | Technical Architect | 1h | 6060 | 110,102 | 111,117 | TL, SA, DBA, BA, PM, CBO, LA |  |
| 82 | 3.33 | System Architecture Design Complete | milestone | 0d? | 2000-11-13 16:00 | 2000-11-13 16:00 | 75, 76, 77, 79, 80, 71 | 2000-10-30 14:00 | 2000-10-30 14:00 | 0d? | 0.25d |  | Project Manager |  | new | 104,105,106,107,108,101 | 109 |  |  |
| 83 | 3.34 | Design work complete | milestone | 0d? | 2000-11-14 10:00 | 2000-11-14 10:00 | 81 | 2000-11-01 15:00 | 2000-11-01 15:00 | 0d? | 0d |  | Project Manager |  | new | 109 | 112 |  |  |
| 84 | 3.35 | Review final schedule and budget with client |  | 1h? | 2000-11-14 10:00 | 2000-11-14 11:00 | 83 | 2000-11-01 15:00 | 2000-11-01 16:00 | 1h? | 0d |  | Project Manager | 1h | 6070 | 111 | 114 |  |  |

Notes:
- 51: Your Requirements Document should be signed off on by the customer. At this point any changes must follow the Change Control Process.
- 52: >Remove the predessesor milestone / Pred should be get the stuff and make sure your licenses are legal / Note: Include "Assess platform and software environment" previously 5030 / (Merged with VSM 5030) / Include "Check versions and compatibility" / Original notes: / It is very beneficial to create a development environment that mirrors the deployment environment. At this point the development environment should have been created by either an SE, the customer or VPS. / Comm Server should be configured for the "development environment" until after testing is complete. All pushes should go to a single internal location.
- 54: Note: Need to see 5090.01 in VPS version as Marsha references it
- 55: > add site map to this section / > Site map and wireframes may be sufficient, in some cases / Note: include "Review storyboard or create if it does not exist" Previously VSM 5050 / (Merged with VSM 5050) / In many instances, the design firm will provide a storyboard. All that is needed to continue forward this time is wireframes, HTML can be incorporated later. / Storyboard should have been created by client or design firm during phase 3000. / Original Notes: / In many instances the customer will request the project team participate with design team. What is important at this point is the functionality and general page layout (e.g. this can be a V/5 component, that cannot).
- 57: > Func spec is the screens and how they are interacted with / Pred should be HTML design / Define graphical user interface and HTML designs / Func spec template should reflect for common solution
- 60: Define login requirements, authorization, cookie or URL tracking
- 61: >Brian Hebert. / Note: as per Marsha "Need more stuff"
- 62: Note: Formerly "Design syndication and multi-channel implementations" / Consider contacting Wireless Specialized Services.
- 63: > Check current terminalogy / Note: Formerly "Design syndication and multi-channel implementations"
- 64: Globalization efforts can become highly complex. It is more than simply replacing text. Consider contacting the Globalization Specialized Service.
- 65: CMA is an application, customer deliverable. Should adhere to look and feel requirements and interface design. / Most times the design will be provided by the customer.
- 67: Disk throughput is affected by cached pages and hardware is impacted by non-cached pages. The percent of cached pages inversely impacts network planning. More cached pages means less network impact. The number one performance enhancement is to cache as many pages as possible. Always try to cache.
- 68: Determine if customer has predefined database naming conventions. / In many instances the customer will be responsible for implementing the design.
- 69: In order to register an asset, the schema must have a single column primary key. If it does not, add another auto number numeric key column for accessing to the table. Defining and using legacy data is a very difficult task. Time should be allocated and expertise needs to be available.
- 70: Ensure that the correct technical skills are available for any third-party integration work. Do early to reduce risks. Security measures should be considered.
- 71: Signed document is controlled and must follow change process to modify.
- 75: Networks are limited by bandwidth and latency. Bandwidth is the single most important factor in the performance of a web site. Latency is a close second. / Define network topology and how Vignette products should be integrated / Sustained network activity should not exceed 40% capacity. Peak activity should not exceed 60% of capacity. / Multiple address hosting impedes performance. / Web server plug-ins may degrade performance by as much as 30% for each plug-in. / All CDSs should point to a central Comm Server.
- 76: Securing sensitive data from the outside world and in some cases to the internal world. Consider such topics as: / - Authentication and Encryption / - Symmetric Cryptography / - Double-key or Private key Cryptography / - Certificate Authorities / - Certificates / - Ciphers / - Secure Socket Layer and SSl Handshakes
- 77: Note: Task name changed from "Validate and refine preliminary architecture" / Define a staging strategy that may include the following: / ·Moving application code from a development server to a QA or production server / ·Managing code development on multiple development servers / ·Moving content from a content management server to the production site, or to multiple production sites / Advanced Deployment Server (ADS) allows you to aggregate managed assets such as content or code into logical collections called jobs. After managed assets are grouped into a job, the job can be easily transferred to another system. After managed assets are moved to another server, they inherit the workflow of the V/5 project into which they are imported. In the event that a job contains application code or content that is later found to be problematic, the system can be restored to its previous state quickly and easily by rolling back the job containing the faulty item(s).
- 78: Sent e-mail with description of content: / In order to make sense of the "designing the system to meet availability requirements, failover, etc." task in Phase 3, the following changes should be made / ·Name of this task should be amended as indicated in italics: / Task 2.20: Refine Initial Hardware Recommendations Based on Performance and Availability Requirements / ·Description should be appended with the following paragraph: / Another important consideration that should be addressed at this point is system availability and redundancy. If the site has a 7x24 requirement, system failover for the application servers and all subsystems need to taken into consideration. While the actual design of the failover systems will be addressed in the Design Phase, the additional hardware requirements should be considered at this point, again due to the lead times required to acquire some types of hardware. / ·New Task 3.28 (inserted): / Design the system to meet availability requirements, including considerations such as redundant systems and failover strategies / ·Task 3.28 Description:/ If your requirements include high availability and a failover strategy, it is at this point that design decisions regarding those strategies need to be made. V/5 is just another application that uses a database. So, for mirroring, failover, replication, etc., the industry standard strategies for fault tolerance apply. What goes on in the database should be of no interest to the mirror, failover, replication, etc., solution. Since we do not expect the flavor of database to change in mid-operation (same libraries, same client path, etc.), these database coordinates are the only dependency that should be required. / If you install and configure Resonate Central Dispatch software (which is shipped on the V/5 e-Business Platform CD-ROM), the V/5 e-Business Platform provides your site with load balancing and failover capabilities./ The Central Dispatch software provides load balancing and failover capabilities for the following V/5 e-Business Platform components: / ·Content Delivery Server (CDS), including the Application Engines (which in turn include the Tcl (ctld) and ASP (asp) Page Generator instances) / ·Observation Management Server (OMS), including the Vignette Routers (vrd), Observation Managers (omd), and Campaign Logging Agents (cld) / ·Communication Server (MCS), including the Multi-channel Delivery Agents (mcd) and Delivery Channel Plug-ins (dcp)/ Additional information on the actual configuration of Resonate Central Dispatch (sometimes just referred to as Resonate in some of the threaded discussion groups) can be found in the V/5 documentation and by searching global.vignette.com. In addition, the V/5 System Administration & Tuning training covers load balancing and failover.
- 80: Remember capacity planning is not a substitute for performance testing under realistic conditions.
- 81: Note: Include planning for implementing separate Design, test and production environments.
- 84: 12/13 >> formerly Update Project Management Plan and schedule. Implement change management procedures for Functional Spec and Detailed Design. / Note: Task 5240 has been eliminated, since app dev and tech inf are in the same phase now / Formerly: Update project plan, schedule

| ID | WBS | Task | Type | Duration | Start | Finish | Predecessors | Baseline start | Baseline finish | Baseline duration | Total slack | Free slack | Resources | Work | Text1 | Text5 | Text6 | Text3 |
| --- | --- | --- | --- | --- | --- | --- | --- | --- | --- | --- | --- | --- | --- | --- | --- | --- | --- | --- |
| 85 | 4 | **Construction** |  | 12.38d? | 2000-11-06 10:00 | 2000-11-22 14:00 |  | 2000-10-17 09:00 | 2000-11-08 09:00 | 16d? | 1.12d |  |  | 115h | new |  |  |  |
| 86 | 4.1 | Conduct Implementation Kickoff |  | 8h? | 2000-11-14 11:00 | 2000-11-15 11:00 | 84 | 2000-11-01 16:00 | 2000-11-02 16:00 | 8h? | 0d |  | Technical Lead | 8h | 7010 | 112 | 120,121,122,123,124,125,119,115,116 |  |
| 87 | 4.2 | Install defect tracking software and implement defect tracking process |  | 1d? | 2000-11-15 11:00 | 2000-11-16 11:00 | 86 | 2000-11-02 16:00 | 2000-11-03 16:00 | 1d? | 3d |  | Technical Architect | 8h |  | 114 | 127 |  |
| 88 | 4.3 | Implement test and production environments |  | 1d? | 2000-11-16 11:00 | 2000-11-17 11:00 | 86 | 2000-11-02 16:00 | 2000-11-03 16:00 | 1d? | 2d |  | Technical Architect | 8h |  | 114 | 127 |  |
| 89 | 4.4 | Implement the System Architecture |  | 1d? | 2000-11-14 10:00 | 2000-11-15 10:00 | 81 | 2000-11-01 15:00 | 2000-11-02 15:00 | 1d? | 2.12d | 0.12d | Technical Architect | 8h |  | 109 | 124 |  |
| 90 | 4.5 | Implement the Organizational Change Management Plan |  | 1d? | 2000-11-06 10:00 | 2000-11-07 10:00 | 47 | 2000-10-17 09:00 | 2000-10-18 09:00 | 1d? | 12.5d | 12.38d | Change Management Coordinator | 8h |  | 77 | 135 |  |
| 91 | 4.6 | Implement database schema |  | 8h? | 2000-11-15 11:00 | 2000-11-16 11:00 | 68, 86 | 2000-11-02 16:00 | 2000-11-03 16:00 | 8h? | 3d |  | Database Administrator | 8h | 7020 | 98,114 | 127 | GD |
| 92 | 4.7 | Define and Construct Data Conversion Processes and Convert Legacy Data |  | 8h? | 2000-11-16 11:00 | 2000-11-17 11:00 | 86, 69 | 2000-11-02 16:00 | 2000-11-03 16:00 | 8h? | 2d |  | Database Administrator | 8h | 7030 | 114,99 | 127 | GD |
| 93 | 4.8 | Implement application integrations |  | 8h? | 2000-11-16 11:00 | 2000-11-17 11:00 | 86 | 2000-11-02 16:00 | 2000-11-03 16:00 | 8h? | 1d |  | Developer | 8h | 7040 | 114 | 126 | GD |
| 94 | 4.9 | Implement Design Specification |  | 1h? | 2000-11-15 11:00 | 2000-11-15 12:00 | 86, 73, 57 | 2000-11-02 16:00 | 2000-11-02 17:00 | 1h? | 2.88d |  | Developer | 1h | 7060 | 114,102,87 | 126 | PD WD |
| 95 | 4.10 | Implement external interfaces |  | 8h? | 2000-11-17 11:00 | 2000-11-20 11:00 | 86, 70 | 2000-11-02 16:00 | 2000-11-03 16:00 | 8h? | 0d |  | Developer | 8h | 7070 | 114,100 | 126 |  |
| 96 | 4.11 | Implement Security Strategy |  | 8h? | 2000-11-15 11:00 | 2000-11-16 11:00 | 86, 76, 89 | 2000-11-02 16:00 | 2000-11-03 16:00 | 8h? | 2d |  | Developer | 8h | 7080 | 114,105,117 | 126 |  |
| 97 | 4.12 | Develop and review test plans |  | 8h? | 2000-11-15 11:00 | 2000-11-16 11:00 | 86 | 2000-11-02 16:00 | 2000-11-03 16:00 | 8h? | 3d |  | Quality Assurance | 8h | 7090 | 73,114 | 127 |  |
| 98 | 4.13 | Perform Code Reviews |  | 8h? | 2000-11-20 11:00 | 2000-11-21 11:00 | 93, 94, 95, 96 | 2000-11-03 16:00 | 2000-11-06 16:00 | 8h? | 0d |  | Developer | 8h | 7100 | 121,122,123,124 | 127 | WD |
| 99 | 4.14 | Perform Component-level testing |  | 1h? | 2000-11-21 11:00 | 2000-11-21 12:00 | 98, 91, 92, 97, 87, 88 | 2000-11-06 16:00 | 2000-11-06 17:00 | 1h? | 0d |  | Quality Assurance | 1h | 7110 | 126,119,120,125,115,116 | 128,129 | PD WD |
| 100 | 4.15 | Perform functional specification testing |  | 8h? | 2000-11-21 13:00 | 2000-11-22 12:00 | 99 | 2000-11-07 08:00 | 2000-11-07 17:00 | 8h? | 0d |  | Quality Assurance | 8h | 8020 | 127 | 130 | GD |
| 101 | 4.16 | Test Backup and Recovery Strategy |  | 8h? | 2000-11-21 13:00 | 2000-11-22 12:00 | 79, 99 | 2000-11-07 08:00 | 2000-11-07 17:00 | 8h? | 0.12d |  | Quality Assurance | 8h | 8030 | 107,127 | 132 |  |
| 102 | 4.17 | Perform requirements testing |  | 1h? | 2000-11-22 13:00 | 2000-11-22 14:00 | 100 | 2000-11-08 08:00 | 2000-11-08 09:00 | 1h? | 0d |  | Quality Assurance | 1h | 8040 | 128 | 132 | GI |
| 103 | 5 | **Deployment** |  | 5.25d? | 2000-11-22 14:00 | 2000-11-29 16:00 |  | 2000-11-08 09:00 | 2000-11-14 11:00 | 4.25d? | 0d |  |  | 43h | new |  |  |  |
| 104 | 5.1 | Launch the beta test version of the site |  | 8h? | 2000-11-22 14:00 | 2000-11-23 14:00 | 101, 102 | 2000-11-08 09:00 | 2000-11-09 09:00 | 8h? | 0d |  | Technical Lead | 8h | 8050 | 129,130 | 133,135,134 |  |
| 105 | 5.2 | Perform Performance Tests |  | 1h? | 2000-11-23 14:00 | 2000-11-23 15:00 | 104 | 2000-11-09 09:00 | 2000-11-09 10:00 | 1h? | 0d |  | Quality Assurance | 1h | 8060 | 132 | 136 |  |
| 106 | 5.3 | Provide Vignette solution training |  | 1h? | 2000-11-23 14:00 | 2000-11-23 15:00 | 104, 47 | 2000-11-09 09:00 | 2000-11-09 10:00 | 1h? | 0d |  | Documentation and Training Developer | 1h | 8110 | 132,77 | 136 |  |
| 107 | 5.4 | Execute Organizational Change Management Plan with Client | milestone | 0d? | 2000-11-23 14:00 | 2000-11-23 14:00 | 104, 90 | 2000-11-09 09:00 | 2000-11-09 09:00 | 0d? | 0.12d |  | Client Business Owner |  | 8080 | 76,132,118 | 136 |  |
| 108 | 5.5 | Testing and predelivery preparation complete | milestone | 0d? | 2000-11-23 15:00 | 2000-11-23 15:00 | 107, 106, 105 | 2000-11-09 10:00 | 2000-11-09 10:00 | 0d? | 0d |  | Project Manager |  | 7120 | 135,134,133 | 137 |  |
| 109 | 5.6 | Launch the Vignette solution to the Internet |  | 1h? | 2000-11-23 15:00 | 2000-11-23 16:00 | 51, 108 | 2000-11-09 10:00 | 2000-11-09 11:00 | 1h? | 0d |  | Logistics Administrator | 1h | 8090 | 81,136 | 138,139 |  |
| 110 | 5.7 | Archive full copy of Vignette solution and project detail |  | 16h? | 2000-11-24 16:00 | 2000-11-28 16:00 | 109 | 2000-11-09 11:00 | 2000-11-13 11:00 | 16h? | 0d |  | Project Manager | 16h | 8100 | 137 | 140 |  |
| 111 | 5.8 | Transition solution ownership to supporting organization |  | 8h? | 2000-11-23 16:00 | 2000-11-24 16:00 | 109 | 2000-11-09 11:00 | 2000-11-10 11:00 | 8h? | 2d |  | Project Manager | 8h | 8120 | 137 | 140 |  |
| 112 | 5.9 | Perform Project Debriefing |  | 8h? | 2000-11-28 16:00 | 2000-11-29 16:00 | 110, 111 | 2000-11-13 11:00 | 2000-11-14 11:00 | 8h? | 0d |  | Project Manager | 8h | 8130 | 138,139 |  |  |

Notes:
- 86: Text4: CRM, CBO, BA, BAR, SME, CM, CP, DBA, DEV, DT, GD, LA, PM, QA, SA, TA
- 87: Consider using Solution Accelerator Issue Tracking package.
- 88: The testing environment should directly replicate the production environment. Failure to do so could result in a very bad release experience.
- 89: Text4: TL, SA
- 90: Text4: CBO, PM
- 91: Note: Formerly "Implement database schema" / Then "Implement the development environment including the application, and technical infrastructure architecture. Implement database schema." / Now back to "Implement database schema" / Formerly notes were only "Typically this task is done by the DBA, a customer role" / Text4: SA
- 92: Note: added text re: converting legacy data. / formerly: Define and construct the processes for data conversion. Convert legacy data. / Applies to legacy data / Text4: BA, TA, LA
- 93: Do early to discover hidden issues. Example would be Ad server, chat server, ….third party integrations. Customer should have third party integration experts available to project team. Consult the KC for prior Vignette integrations. / Text4: TL, TA
- 94: Design should follow the Detailed Design document and the Project Management Plan. / Text4: TL, TA
- 95: Text4: TL, TA
- 96: Text4: TL, TA, SA
- 97: Note: Formerly "Review and update final test plans" / Creation and review of test plans have been concatenated into this task. Former task 5220 has been removed. / It may be advisable to expand the testing tasks into greater detail, or to expand the capabilities and usability of the test plan artifact, based upon input that testing needs to be more emphasized. / Text4: TL, DEV, TA
- 98: Trace the logic of each template, function , procedure. Verify that Template Development Guidelines were followed, code is properly commented, consistent programming techniques were used, code is "simple" or traceable. / Text4: TL, TA
- 99: Before a component can be considered successfully tested, every statement has to be executed and the desired result achieved. / PSN: testing profiles and profile options at the component level / Text4: TL, DEV
- 100: A two step approach should be used: the development team should make the first approval, next the customer should step through the Functional Specification / Text4: TL, DEV, TA
- 101: Simulate at least one failure of every component in the system. / Text4: TL, DEV, TA, LA
- 102: A two step approach should be used: the development team should make the first approval, next the customer should step through the Requirements Document / Text4: TL, DEV, TA
- 104: Be sure to include people that are not part of the development team . Include CMA users who will and will not be inputting content. Do the same for the CDA. / Text4: QA, DEV, TA
- 105: Note: Include "Evaluate performance results and identify problem areas" VSM 8070 / (Merged with VSM 8070) / "Review template measurement tools printouts. May or may not be a formal process. If a bug tracking system is in use, review logs." / Text4: TL, DEV, TA
- 106: Text4: LA
- 107: Text4: PM, LA
- 108: Note: Formerly "Update project plan, schedule"
- 109: Text4: TL
- 110: Text4: TL
- 111: Note: Formerly "Transition Ownership of Vignette solution and Process to Client or Partner" / Text4: CBO, LA
- 112: Very important step. Share best practices, knowledge…. / Text4: CRM, CBO, BA, BAR, SME, CM, CP, DBA, DEV, DT, GD, LA, QA, SA, TA, TL
